# National Health Campaign

Schedule from MS Project, 2024-03-11 to 2024-05-03, costs in €, A marks actual dates.
Research Programme
ABC Research Ltd.

## Calendars

- Standard: Mon-Fri 08:00-12:00, 13:00-17:00; Sat-Sun off.

## Resources

| Resource | Group | Rate |
| --- | --- | --- |
| Joanne Kelly | Management | 19.23 |
| Riona Carr | Executive | 6.25 |
| Mary Breen | Management | 19.23 |
| Tom Joyce | Office Staff | 6.88 |
| Conf Room | Facilities |  |
| Junior Staff | Office Satff | 3.75 |
| Printing | External |  |

## Schedule

| ID | WBS | Task | Type | Duration | Start | Finish | Predecessors | Complete | Remaining | Baseline start | Baseline finish | Baseline duration | Resources | Work | Actual work | Cost | Baseline cost | Actual cost |
| --- | --- | --- | --- | --- | --- | --- | --- | --- | --- | --- | --- | --- | --- | --- | --- | --- | --- | --- |
| 1 | 1 | **National Health Campaign** |  | 39d | 2024-03-11 A | 2024-05-02 |  | 57% | 16.66d | 2024-03-11 | 2024-05-02 | 39d |  | 196h | 110h | 1,095.19 | 1,065.19 | 697.69 |
| 2 | 1.1 | **Planning** |  | 13d | 2024-03-11 A | 2024-03-27 |  | 60% | 5.25d | 2024-03-11 | 2024-03-27 | 13d |  | 104h | 62h | 567.69 | 537.69 | 367.69 |
| 3 | 1.1.1 | Design Questionnaire | manual | 2d | 2024-03-11 A | 2024-03-12 A | 7 | 100% |  | 2024-03-27 | 2024-03-28 | 2d | Joanne Kelly | 16h | 16h | 307.69 | 307.69 | 307.69 |
| 4 | 1.1.2 | Type questionnaire | manual | 2d | 2024-03-14 A | 2024-03-15 A | 3 | 100% |  | 2024-03-29 | 2024-03-29 | 1d | Junior Staff | 16h | 16h | 60 | 30 | 60 |
| 5 | 1.1.3 | Print questionnaire | manual | 1w | 2024-03-15 A | 2024-03-21 | 9, 4 | 75% | 0.25w | 2024-04-01 | 2024-04-05 | 1w | Printing | 40h | 30h |  |  |  |
| 6 | 1.1.4 | Invite interviewers to briefing meeting | manual | 4d | 2024-03-22 | 2024-03-27 | 5 |  |  | 2024-04-08 | 2024-04-11 | 4d | Riona Carr | 32h |  | 200 | 200 |  |
| 7 | 1.1.5 | Survey planning complete | milestone, manual | 0d | 2024-03-27 | 2024-03-27 |  |  |  | 2024-03-27 | 2024-03-27 | 0d |  |  |  |  |  |  |
| 8 | 1.2 | **Briefing set up** |  | 10d | 2024-03-22 A | 2024-04-04 |  | 55% | 4.55d | 2024-03-22 | 2024-04-04 | 10d |  | 92h | 48h | 527.5 | 527.5 | 330 |
| 9 | 1.2.1 | Book conference room for briefing meeting | manual | 4h | 2024-03-22 | 2024-03-22 |  |  |  | 2024-03-15 | 2024-03-15 | 4h | Tom Joyce | 4h |  | 27.5 | 27.5 |  |
| 10 | 1.2.2 | Contact interviewing locations | manual | 3d | 2024-03-22 A | 2024-03-26 A | 9SS | 100% |  | 2024-03-15 | 2024-03-19 | 3d | Tom Joyce | 24h | 24h | 165 | 165 | 165 |
| 11 | 1.2.3 | Prepare rosters | manual | 4d | 2024-03-26 A | 2024-03-29 | 10 | 75% | 1d | 2024-03-20 | 2024-03-26 | 4d | Tom Joyce | 32h | 24h | 220 | 220 | 165 |
| 12 | 1.2.4 | prepare packs for each interviewer | manual | 3d | 2024-04-01 | 2024-04-03 | 11 |  |  | 2024-03-26 | 2024-03-29 | 3d | Junior Staff | 24h |  | 90 | 90 |  |
| 13 | 1.2.5 | Briefing meeting with Interviewers | manual | 4h | 2024-04-04 | 2024-04-04 | 12 |  |  | 2024-03-29 | 2024-03-29 | 4h | Conf Room; Riona Carr | 8h |  | 25 | 25 |  |
| 14 | 1.2.6 | Interviewers briefing complete | milestone, manual | 0d | 2024-04-04 | 2024-04-04 | 13 |  |  | 2024-04-01 | 2024-04-01 | 0d |  |  |  |  |  |  |
| 15 | 2 | **Data processing** |  | 12.5d | 2024-04-05 | 2024-04-23 | 1 |  |  | 2024-04-05 | 2024-04-23 | 12.5d |  | 148h |  | 892.69 | 892.69 |  |
| 16 | 2.1 | Prepare Book-in forms | manual | 2d | 2024-04-05 | 2024-04-08 |  |  |  | 2024-04-05 | 2024-04-08 | 2d | Riona Carr | 16h |  | 100 | 100 |  |
| 17 | 2.2 | Check questionnaires | manual | 2d | 2024-04-09 | 2024-04-10 | 16 |  |  | 2024-04-09 | 2024-04-10 | 2d | Junior Staff | 16h |  | 60 | 60 |  |
| 18 | 2.3 | Code questionnaires | manual | 1.5w | 2024-04-11 | 2024-04-22 | 17FF |  |  | 2024-04-01 | 2024-04-10 | 1.5w | Junior Staff | 60h |  | 225 | 225 |  |
| 19 | 2.4 | Input data in computer | manual | 3d | 2024-04-16 | 2024-04-18 | 18FS-3d |  |  | 2024-04-08 | 2024-04-10 | 3d | Junior Staff | 24h |  | 90 | 90 |  |
| 20 | 2.5 | Analyse the data | manual | 2d | 2024-04-19 | 2024-04-22 | 19 |  |  | 2024-04-25 | 2024-04-29 | 2d | Joanne Kelly; Tom Joyce | 32h |  | 417.69 | 417.69 |  |
| 21 | 2.6 | Data processing complete | milestone, manual | 0d | 2024-04-22 | 2024-04-22 | 20 |  |  | 2024-04-29 | 2024-04-29 | 0d |  |  |  |  |  |  |
| 22 | 3 | **Interpretation** |  | 8d | 2024-04-23 | 2024-05-02 | 15 |  |  | 2024-04-23 | 2024-05-02 | 8d |  | 128h |  | 2,461.54 | 2,461.54 |  |
| 23 | 3.1 | prepare presentation | manual | 3d | 2024-04-23 | 2024-04-25 |  |  |  | 2024-04-23 | 2024-04-25 | 3d | Mary Breen; Joanne Kelly | 48h |  | 923.08 | 923.08 |  |
| 24 | 3.2 | Prepare research report | manual | 1w | 2024-04-26 | 2024-05-02 | 23 |  |  | 2024-04-26 | 2024-05-02 | 1w | Joanne Kelly; Mary Breen | 80h |  | 1,538.46 | 1,538.46 |  |
| 25 | 3.3 | Project complete | milestone, manual | 0d | 2024-05-03 | 2024-05-03 | 24 |  |  | 2024-05-03 | 2024-05-03 | 0d |  |  |  |  |  |  |
